# Dynaslope2018

Schedule from MS Project XML, 2018-02-08 to 2018-09-03.

## Calendars

- Standard[Imported][Imported][Imported]: Mon-Fri 08:00-12:00, 13:00-17:00; Sat-Sun off. Exceptions (off unless hours are given): 2018-02-13, 2018-03-02 to 2018-03-06, 2018-03-26 to 2018-03-27, 2018-03-30 to 2018-04-03, 2018-04-06, 2018-04-28, 2018-05-04 to 2018-05-08, 2018-06-01 to 2018-06-04, 2018-06-09, 2018-06-29 to 2018-07-03, 2018-08-03 to 2018-08-07, 2018-08-18, 2018-08-24, 2018-08-31 to 2018-09-03.

## Resources

| Resource |
| --- |
| Unassigned |
| geotech 1 |
| geotech 2 |
| geotech 3 |
| geol 2 |
| Surveyor 1 |
| geol 8 |
| geol 7 |
| geol 6 |
| geol 1 |
| geol 3 |
| geol 4 |
| geol 5 |
| data scientist 6 |
| data scientist 8 |
| data scientist 1 |
| data scientist 2 |
| data scientist 3 |
| data scientist 4 |
| data scientist 5 |
| data scientist 7 |
| social scientist 3 |
| social scientist 4 |
| social scientist 1 |
| social scientist 2 |
| emb engr 2 |
| DRRS 2 |
| DRRS 1 |
| emb engr 6 |
| comm res 1 |
| comm res 2 |
| sys ad 2 |
| full stack dev 2 |
| eletech |
| full stack dev 5 |
| full stack dev 4 |
| full stack dev 3 |
| full stack dev 2 |
| full stack dev 1 |
| programmer 3 |
| comm dev |
| emb engr 8 |
| emb engr 1 |
| emb engr 3 |
| emb engr 4 |
| emb engr 5 |
| emb engr 7 |
| MEAL officer 2 |
| sys ad 1 |
| MEAL officer 5 |
| programmer 5 |
| programmer 6 |
| programmer 1 |
| programmer 2 |
| programmer 4 |
| MEAL staff 4 |
| analyst 1 |
| analyst 2 |
| analyst 3 |
| analyst 4 |
| MEAL staff 9 |
| MEAL officer 1 |
| MEAL officer 3 |
| MEAL officer 4 |
| MEAL officer 6 |
| comm dev 4 |
| MEAL staff 1 |
| MEAL staff 2 |
| MEAL staff 3 |
| MEAL staff 5 |
| MEAL staff 6 |
| MEAL staff 7 |
| MEAL staff 8 |
| MEAL staff 10 |
| MEAL staff 11 |
| MEAL staff 12 |
| comm dev 1 |
| comm dev 2 |
| comm dev 3 |
| training specialist 3 |
| facilitator 1 |
| facilitator 2 |
| facilitator 3 |
| technical writer 2 |
| monitoringPersonnel40+ |
| eletech 1 |
| eletech 2 |
| eletech 3 |
| eletech 4 |
| eletech 5 |
| training specialist |
| training specialist 1 |
| training specialist 2 |
| training specialist 4 |
| MEAL expert |
| technical writer |
| technical writer 1 |
| technical writer 3 |
| report reviewer |
| report reviewer 1 |
| report reviewer 2 |
| report reviewer 3 |

## Schedule

| ID | WBS | Task | Duration | Start | Finish | Predecessors | Total slack | Constraint | Resources |
| --- | --- | --- | --- | --- | --- | --- | --- | --- | --- |
| 1 | 1 | **Landslide risk information** | 70d? | 2018-05-16 | 2018-09-03 |  |  |  |  |
| 2 | 1.1 | **methods report (Hazards)** | 44d? | 2018-06-25 | 2018-09-03 |  |  |  |  |
| 3 | 1.1.1 | MoMs | 1d? | 2018-09-03 | 2018-09-03 |  | 12500d | as late as possible |  |
| 4 | 1.1.2 | study surficial displacement behaviour | 1d? | 2018-09-03 | 2018-09-03 |  | 12500d | as late as possible |  |
| 5 | 1.1.3 | **slope stability models (FEM)** | 36d | 2018-07-10 | 2018-09-03 |  |  |  |  |
| 6 | 1.1.3.1 | review related literature | 7d | 2018-07-10 | 2018-07-18 |  | 9100d | as late as possible | geotech 1 |
| 7 | 1.1.3.2 | develop prototype | 5d | 2018-07-19 | 2018-07-25 | 6 |  | as late as possible | geotech 1 |
| 8 | 1.1.3.3 | test model with monitoring data | 14d | 2018-07-26 | 2018-08-14 | 7 |  | as late as possible | geotech 1 |
| 9 | 1.1.3.4 | field data gathering | 6d | 2018-08-02 | 2018-08-14 | 7 | 500d | as late as possible | geol 1; geotech 1 |
| 10 | 1.1.3.5 | evaluate model (report as PI of slope stab model) | 4d | 2018-08-15 | 2018-08-20 | 8, 9 |  | as late as possible | geotech 1 |
| 11 | 1.1.3.6 | write report | 5d | 2018-08-21 | 2018-08-27 | 10 |  | as late as possible | geotech 1 |
| 12 | 1.1.3.7 | develop training materials | 3d | 2018-08-28 | 2018-08-30 | 11 |  | as late as possible | geotech 1 |
| 13 | 1.1.3.8 | conduct training | 2d | 2018-08-31 | 2018-09-03 | 12 |  | as late as possible | geotech 1 |
| 14 | 1.1.4 | **slope stability models (LEM1)** | 24d | 2018-07-26 | 2018-09-03 |  |  |  |  |
| 15 | 1.1.4.1 | review related literature | 5d | 2018-07-26 | 2018-08-01 |  | 10300d | as late as possible | geotech 2 |
| 16 | 1.1.4.2 | develop prototype | 5d | 2018-08-02 | 2018-08-08 | 15 |  | as late as possible | geotech 2 |
| 17 | 1.1.4.3 | test model with monitoring data | 5d | 2018-08-09 | 2018-08-15 | 16, 215 |  | as late as possible | geotech 2 |
| 18 | 1.1.4.4 | field data gathering | 13d | 2018-08-16 | 2018-09-03 | 16 | 500d | as late as possible | geol 2 |
| 19 | 1.1.4.5 | field data gathering | 13d | 2018-08-16 | 2018-09-03 | 16 | 500d | as late as possible | geotech 2 |
| 20 | 1.1.4.6 | evaluate model (report as PI of slope stab model) | 3d | 2018-08-16 | 2018-08-20 | 17 |  | as late as possible | geotech 2 |
| 21 | 1.1.4.7 | write report | 5d | 2018-08-21 | 2018-08-27 | 20 |  | as late as possible | geotech 2 |
| 22 | 1.1.4.8 | develop training materials | 3d | 2018-08-28 | 2018-08-30 | 21 |  | as late as possible | geotech 2 |
| 23 | 1.1.4.9 | conduct training | 2d | 2018-08-31 | 2018-09-03 | 22 |  | as late as possible | geotech 2 |
| 24 | 1.1.5 | **slope stability models (LEM2)** | 32d | 2018-07-16 | 2018-09-03 |  |  |  |  |
| 25 | 1.1.5.1 | review related literature | 5d | 2018-07-16 | 2018-07-20 |  | 9500d | as late as possible | geotech 3 |
| 26 | 1.1.5.2 | develop prototype | 5d | 2018-07-23 | 2018-07-27 | 25 |  | as late as possible | geotech 3 |
| 27 | 1.1.5.3 | test model with monitoring data | 5d | 2018-08-09 | 2018-08-15 | 26, 215 | 500d | as late as possible | geotech 3 |
| 28 | 1.1.5.4 | field data gathering | 26d | 2018-07-30 | 2018-09-03 | 26 |  | as late as possible | geol 3 |
| 29 | 1.1.5.5 | field data gathering | 13d | 2018-08-16 | 2018-09-03 | 26 | 1200d | as late as possible | geotech 3 |
| 30 | 1.1.5.6 | evaluate model (report as PI of slope stab model) | 3d | 2018-08-16 | 2018-08-20 | 27 |  | as late as possible | geotech 3 |
| 31 | 1.1.5.7 | write report | 5d | 2018-08-21 | 2018-08-27 | 30 |  | as late as possible | geotech 3 |
| 32 | 1.1.5.8 | develop training materials | 3d | 2018-08-28 | 2018-08-30 | 31 |  | as late as possible | geotech 3 |
| 33 | 1.1.5.9 | conduct training | 2d | 2018-08-31 | 2018-09-03 | 32 |  | as late as possible | geotech 3 |

| ID | WBS | Task | Duration | Start | Finish | Predecessors | Total slack | Constraint | Resources |
| --- | --- | --- | --- | --- | --- | --- | --- | --- | --- |
| 34 | 1.1.6 | **runout model 1** | 34d | 2018-07-12 | 2018-09-03 |  |  |  |  |
| 35 | 1.1.6.1 | review related literature | 10d | 2018-07-12 | 2018-07-25 |  | 9200d | as late as possible |  |
| 36 | 1.1.6.2 | develop prototype | 10d | 2018-07-26 | 2018-08-08 | 35 |  | as late as possible | geol 4 |
| 37 | 1.1.6.3 | test model with monitoring data | 5d | 2018-08-09 | 2018-08-15 | 36, 215 |  | as late as possible | geol 4 |
| 38 | 1.1.6.4 | evaluate model (report as PI of runout model) | 3d | 2018-08-16 | 2018-08-20 | 37 |  | as late as possible | geol 4 |
| 39 | 1.1.6.5 | write report | 5d | 2018-08-21 | 2018-08-27 | 38 |  | as late as possible | geol 4 |
| 40 | 1.1.6.6 | develop training materials | 3d | 2018-08-28 | 2018-08-30 | 39 |  | as late as possible | geol 4 |
| 41 | 1.1.6.7 | conduct training | 2d | 2018-08-31 | 2018-09-03 | 40 |  | as late as possible | geol 4 |
| 42 | 1.1.7 | **runout model 2** | 29d | 2018-07-19 | 2018-09-03 |  |  |  |  |
| 43 | 1.1.7.1 | review related literature | 5d | 2018-07-19 | 2018-07-25 |  | 9800d | as late as possible |  |
| 44 | 1.1.7.2 | develop prototype | 10d | 2018-07-26 | 2018-08-08 | 43 |  | as late as possible | geol 5 |
| 45 | 1.1.7.3 | test model with monitoring data | 5d | 2018-08-09 | 2018-08-15 | 44, 215 |  | as late as possible | geol 5 |
| 46 | 1.1.7.4 | evaluate model (report as PI of runout model) | 3d | 2018-08-16 | 2018-08-20 | 45 |  | as late as possible | geol 5 |
| 47 | 1.1.7.5 | write report | 5d | 2018-08-21 | 2018-08-27 | 46 |  | as late as possible | geol 5 |
| 48 | 1.1.7.6 | develop training materials | 3d | 2018-08-28 | 2018-08-30 | 47 |  | as late as possible | geol 5 |
| 49 | 1.1.7.7 | conduct training | 2d | 2018-08-31 | 2018-09-03 | 48 |  | as late as possible | geol 5 |
| 50 | 1.1.8 | **threshold model 1** | 27d | 2018-06-25 | 2018-08-07 |  |  |  |  |
| 51 | 1.1.8.1 | review related literature | 5d | 2018-06-25 | 2018-06-29 |  | 8300d | as late as possible | data scientist 1 |
| 52 | 1.1.8.2 | develop prototype | 14d | 2018-07-02 | 2018-07-19 | 51 |  | as late as possible | data scientist 1 |
| 53 | 1.1.8.3 | implement model alongside operations | 6d | 2018-07-20 | 2018-07-27 | 52, 215 |  | as late as possible | data scientist 1 |
| 54 | 1.1.8.4 | evaluate model (report as PI of threshold model) | 1d | 2018-07-30 | 2018-07-30 | 53, 98 |  | as late as possible | data scientist 1 |
| 55 | 1.1.8.5 | write report | 4d | 2018-07-31 | 2018-08-03 | 54 |  | as late as possible | data scientist 1 |
| 56 | 1.1.8.6 | develop training materials | 1d | 2018-08-06 | 2018-08-06 | 55 |  | as late as possible | data scientist 1 |
| 57 | 1.1.8.7 | conduct training | 1d | 2018-08-07 | 2018-08-07 | 56 |  | as late as possible | data scientist 1 |

| ID | WBS | Task | Duration | Start | Finish | Predecessors | Total slack | Constraint | Resources |
| --- | --- | --- | --- | --- | --- | --- | --- | --- | --- |
| 58 | 1.1.9 | **threshold model 2** | 27d | 2018-06-25 | 2018-08-07 |  |  |  |  |
| 59 | 1.1.9.1 | review related literature | 5d | 2018-06-25 | 2018-06-29 |  | 8300d | as late as possible | data scientist 2 |
| 60 | 1.1.9.2 | develop prototype | 14d | 2018-07-02 | 2018-07-19 | 59 |  | as late as possible | data scientist 2 |
| 61 | 1.1.9.3 | implement model alongside operations | 6d | 2018-07-20 | 2018-07-27 | 60, 215 |  | as late as possible | data scientist 2 |
| 62 | 1.1.9.4 | evaluate model (report as PI of threshold model) | 1d | 2018-07-30 | 2018-07-30 | 61, 98 |  | as late as possible | data scientist 2 |
| 63 | 1.1.9.5 | write report | 4d | 2018-07-31 | 2018-08-03 | 62 |  | as late as possible | data scientist 2 |
| 64 | 1.1.9.6 | develop training materials | 1d | 2018-08-06 | 2018-08-06 | 63 |  | as late as possible | data scientist 2 |
| 65 | 1.1.9.7 | conduct training | 1d | 2018-08-07 | 2018-08-07 | 64 |  | as late as possible | data scientist 2 |
| 66 | 1.1.10 | **threshold model 3** | 27d | 2018-06-25 | 2018-08-07 |  |  |  |  |
| 67 | 1.1.10.1 | review related literature | 5d | 2018-06-25 | 2018-06-29 |  | 8300d | as late as possible | data scientist 3 |
| 68 | 1.1.10.2 | develop prototype | 14d | 2018-07-02 | 2018-07-19 | 67 |  | as late as possible | data scientist 3 |
| 69 | 1.1.10.3 | implement model alongside operations | 6d | 2018-07-20 | 2018-07-27 | 68, 215 |  | as late as possible | data scientist 3 |
| 70 | 1.1.10.4 | evaluate model (report as PI of threshold model) | 1d | 2018-07-30 | 2018-07-30 | 69, 98 |  | as late as possible | data scientist 3 |
| 71 | 1.1.10.5 | write report | 4d | 2018-07-31 | 2018-08-03 | 70 |  | as late as possible | data scientist 3 |
| 72 | 1.1.10.6 | develop training materials | 1d | 2018-08-06 | 2018-08-06 | 71 |  | as late as possible | data scientist 3 |
| 73 | 1.1.10.7 | conduct training | 1d | 2018-08-07 | 2018-08-07 | 72 |  | as late as possible | data scientist 3 |
| 74 | 1.1.11 | **threshold model 4** | 27d | 2018-06-25 | 2018-08-07 |  |  |  |  |
| 75 | 1.1.11.1 | review related literature | 5d | 2018-06-25 | 2018-06-29 |  | 8300d | as late as possible | data scientist 4 |
| 76 | 1.1.11.2 | develop prototype | 14d | 2018-07-02 | 2018-07-19 | 75 |  | as late as possible | data scientist 4 |
| 77 | 1.1.11.3 | implement model alongside operations | 6d | 2018-07-20 | 2018-07-27 | 215, 76 |  | as late as possible | data scientist 4 |
| 78 | 1.1.11.4 | evaluate model (report as PI of threshold model) | 1d | 2018-07-30 | 2018-07-30 | 98, 77 |  | as late as possible | data scientist 4 |
| 79 | 1.1.11.5 | write report | 4d | 2018-07-31 | 2018-08-03 | 78 |  | as late as possible | data scientist 4 |
| 80 | 1.1.11.6 | develop training materials | 1d | 2018-08-06 | 2018-08-06 | 79 |  | as late as possible | data scientist 4 |
| 81 | 1.1.11.7 | conduct training | 1d | 2018-08-07 | 2018-08-07 | 80 |  | as late as possible | data scientist 4 |

| ID | WBS | Task | Duration | Start | Finish | Predecessors | Total slack | Constraint | Resources |
| --- | --- | --- | --- | --- | --- | --- | --- | --- | --- |
| 82 | 1.1.12 | **threshold model 5** | 27d | 2018-06-25 | 2018-08-07 |  |  |  |  |
| 83 | 1.1.12.1 | review related literature | 5d | 2018-06-25 | 2018-06-29 |  | 8300d | as late as possible | data scientist 5 |
| 84 | 1.1.12.2 | develop prototype | 14d | 2018-07-02 | 2018-07-19 | 83 |  | as late as possible | data scientist 5 |
| 85 | 1.1.12.3 | implement model alongside operations | 6d | 2018-07-20 | 2018-07-27 | 84, 215 |  | as late as possible | data scientist 5 |
| 86 | 1.1.12.4 | evaluate model (report as PI of threshold model) | 1d | 2018-07-30 | 2018-07-30 | 85, 98 |  | as late as possible | data scientist 5 |
| 87 | 1.1.12.5 | write report | 4d | 2018-07-31 | 2018-08-03 | 86 |  | as late as possible | data scientist 5 |
| 88 | 1.1.12.6 | develop training materials | 1d | 2018-08-06 | 2018-08-06 | 87 |  | as late as possible | data scientist 5 |
| 89 | 1.1.12.7 | conduct training | 1d | 2018-08-07 | 2018-08-07 | 88 |  | as late as possible | data scientist 5 |
| 90 | 1.1.13 | **threshold model 6** | 27d | 2018-06-25 | 2018-08-07 |  |  |  |  |
| 91 | 1.1.13.1 | review related literature | 5d | 2018-06-25 | 2018-06-29 |  | 8300d | as late as possible | data scientist 6 |
| 92 | 1.1.13.2 | develop prototype | 14d | 2018-07-02 | 2018-07-19 | 91 |  | as late as possible | data scientist 6 |
| 93 | 1.1.13.3 | implement model alongside operations | 6d | 2018-07-20 | 2018-07-27 | 92, 215 |  | as late as possible | data scientist 6 |
| 94 | 1.1.13.4 | evaluate model (report as PI of threshold model) | 1d | 2018-07-30 | 2018-07-30 | 93, 98 |  | as late as possible | data scientist 6 |
| 95 | 1.1.13.5 | write report | 4d | 2018-07-31 | 2018-08-03 | 94 |  | as late as possible | data scientist 6 |
| 96 | 1.1.13.6 | develop training materials | 1d | 2018-08-06 | 2018-08-06 | 95 |  | as late as possible | data scientist 6 |
| 97 | 1.1.13.7 | conduct training | 1d | 2018-08-07 | 2018-08-07 | 96 |  | as late as possible | data scientist 6 |
| 98 | 1.1.14 | develop threshold performance index | 12d | 2018-07-12 | 2018-07-27 |  | 9300d | as late as possible | data scientist 7 |
| 99 | 1.2 | **methods report (C&V)** | 39d | 2018-06-29 | 2018-09-03 |  |  |  |  |
| 100 | 1.2.1 | **method 1** | 39d | 2018-06-29 | 2018-09-03 |  |  |  |  |
| 101 | 1.2.1.1 | evaluate C&V frameworks (explore REDAS as one of the frameworks/models) | 14d | 2018-06-29 | 2018-07-18 |  | 8400d | as late as possible | social scientist 1 |
| 102 | 1.2.1.2 | development of C&V assessment modules | 16d | 2018-07-19 | 2018-08-09 | 101 |  | as late as possible | social scientist 1 |
| 103 | 1.2.1.3 | recommend C&V info system | 5d | 2018-08-28 | 2018-09-03 | 102 | 1100d | as late as possible | social scientist 1 |
| 104 | 1.2.1.4 | design database (linking to EWSL data storage and management)) | 5d | 2018-08-24 | 2018-08-30 | 101 | 2200d | as late as possible | social scientist 1 |
| 105 | 1.2.1.5 | write report | 2d | 2018-08-31 | 2018-09-03 | 104 |  | as late as possible | social scientist 1 |
| 106 | 1.2.1.6 | develop training materials | 12d | 2018-08-10 | 2018-08-27 | 102 |  | as late as possible | social scientist 1 |
| 107 | 1.2.1.7 | conduct training | 5d | 2018-08-28 | 2018-09-03 | 106 |  | as late as possible | social scientist 1 |

| ID | WBS | Task | Duration | Start | Finish | Predecessors | Total slack | Constraint | Resources |
| --- | --- | --- | --- | --- | --- | --- | --- | --- | --- |
| 108 | 1.2.2 | **method 2** | 39d | 2018-06-29 | 2018-09-03 |  |  |  |  |
| 109 | 1.2.2.1 | evaluate C&V frameworks (explore REDAS as one of the frameworks/models) | 14d | 2018-06-29 | 2018-07-18 |  | 8400d | as late as possible | social scientist 2 |
| 110 | 1.2.2.2 | development of C&V assessment modules | 16d | 2018-07-19 | 2018-08-09 | 109 |  | as late as possible | social scientist 2 |
| 111 | 1.2.2.3 | recommend C&V info system | 5d | 2018-08-28 | 2018-09-03 | 110 | 1100d | as late as possible | social scientist 2 |
| 112 | 1.2.2.4 | design database (linking to EWSL data storage and management)) | 5d | 2018-08-24 | 2018-08-30 | 109 | 2200d | as late as possible | social scientist 2 |
| 113 | 1.2.2.5 | write report | 2d | 2018-08-31 | 2018-09-03 | 112 |  | as late as possible | social scientist 2 |
| 114 | 1.2.2.6 | develop training materials | 12d | 2018-08-10 | 2018-08-27 | 110 |  | as late as possible | social scientist 2 |
| 115 | 1.2.2.7 | conduct training | 5d | 2018-08-28 | 2018-09-03 | 114 |  | as late as possible | social scientist 2 |
| 116 | 1.3 | **methods report (Risk)** | 70d | 2018-05-16 | 2018-09-03 |  |  |  |  |
| 117 | 1.3.1 | evaluate frameworks for risk | 17d | 2018-05-16 | 2018-06-07 |  | 5600d | as late as possible | DRRS 1 |
| 118 | 1.3.2 | develop methods | 12d | 2018-06-08 | 2018-06-25 | 117 |  | as late as possible | DRRS 1 |
| 119 | 1.3.3 | write report | 2d | 2018-06-26 | 2018-06-27 | 118 |  | as late as possible | DRRS 1 |
| 120 | 1.3.4 | develop training materials | 10d | 2018-06-28 | 2018-07-11 | 119 |  | as late as possible | DRRS 1 |
| 121 | 1.3.5 | conduct training (NC 3) | 38d | 2018-07-12 | 2018-09-03 | 120 |  | as late as possible | DRRS 1 |
| 122 | 1.4 | **per site landslide risk reports (focus sites)** | 41d? | 2018-06-28 | 2018-09-03 |  |  |  |  |
| 123 | 1.4.1 | integration of hazard, capacity, and vulnerability information | 11d | 2018-08-20 | 2018-09-03 | 118, 132, 136 |  | as late as possible | DRRS 1 |
| 124 | 1.4.2 | **per site hazard reports (all sites)** | 29d? | 2018-07-05 | 2018-08-17 |  |  |  |  |
| 125 | 1.4.2.1 | conduct fieldwork (resurvey) | 25d | 2018-07-05 | 2018-08-13 |  | 8700d | as late as possible |  |
| 126 | 1.4.2.2 | consolidate field notes | 1d? | 2018-08-14 | 2018-08-14 | 125 |  | as late as possible |  |
| 127 | 1.4.2.3 | review and identify active sites | 1d? | 2018-08-13 | 2018-08-13 |  | 11100d | as late as possible |  |
| 128 | 1.4.2.4 | conduct quarterly survey (RTS/RTK/remap) | 1d? | 2018-08-14 | 2018-08-14 | 127 |  | as late as possible |  |
| 129 | 1.4.2.5 | analyze monitoring data (requires access to database) | 1d? | 2018-08-15 | 2018-08-15 | 126, 128 |  | as late as possible |  |
| 130 | 1.4.2.6 | update volume, depth, extent (using current models) | 1d? | 2018-08-16 | 2018-08-16 | 129 |  | as late as possible |  |
| 131 | 1.4.2.7 | update thresholds with monitoring data and performance index | 1d? | 2018-08-16 | 2018-08-16 |  | 11400d | as late as possible |  |
| 132 | 1.4.2.8 | update per site hazard reports (updated maps as PI) | 1d? | 2018-08-17 | 2018-08-17 | 131, 130 |  | as late as possible |  |

| ID | WBS | Task | Duration | Start | Finish | Predecessors | Total slack | Constraint | Resources |
| --- | --- | --- | --- | --- | --- | --- | --- | --- | --- |
| 133 | 1.4.3 | **per site capacity and vulnerability reports (2 focus sites, Mindanao)** | 31d | 2018-06-28 | 2018-08-17 |  |  |  |  |
| 134 | 1.4.3.1 | conduct data gathering | 12d | 2018-06-28 | 2018-07-13 |  | 8300d | as late as possible | social scientist 3 |
| 135 | 1.4.3.2 | analyze data | 20d | 2018-07-16 | 2018-08-10 | 134 |  | as late as possible | social scientist 3 |
| 136 | 1.4.3.3 | update per site capacity and vulnerability reports | 5d | 2018-08-13 | 2018-08-17 | 135 |  | as late as possible | social scientist 3 |
| 137 | 1.5 | **"Alert protocol" -- essentually how risk knowledge informs early warning practice** | 23d | 2018-07-13 | 2018-08-17 |  |  |  |  |
| 138 | 1.5.1 | review of related literature | 14d | 2018-07-13 | 2018-08-01 |  | 9400d | as late as possible | DRRS 2 |
| 139 | 1.5.2 | review and evaluate current alert protocol | 10d | 2018-08-02 | 2018-08-15 | 138 |  | as late as possible | DRRS 2 |
| 140 | 1.5.3 | recomend alert protocol | 2d | 2018-08-16 | 2018-08-17 | 139 |  | as late as possible | DRRS 2 |
| 141 | 2 | **Early warning system for landslides** | 126d? | 2018-02-08 | 2018-09-03 |  |  |  |  |
| 142 | 2.1 | **Data gathering system** | 126d | 2018-02-08 | 2018-09-03 |  |  |  |  |
| 143 | 2.1.1 | **community reported data** | 126d | 2018-02-08 | 2018-09-03 |  |  |  |  |
| 144 | 2.1.1.1 | provide initial performance metrics based on 2017 experience | 1d | 2018-02-08 | 2018-02-08 |  | 11100d |  |  |
| 145 | 2.1.1.2 | improve means of gathering surficial data (including transmission) | 37d | 2018-07-06 | 2018-09-03 | 259 | 3000d | as late as possible |  |
| 146 | 2.1.1.3 | develop on the ground validation of rainfall via sensors | 37d | 2018-07-06 | 2018-09-03 |  | 8800d | as late as possible |  |
| 147 | 2.1.2 | **tilt** | 126d | 2018-02-08 | 2018-09-03 |  |  |  |  |
| 148 | 2.1.2.1 | provide initial performance metrics based on 2017 experience | 1d | 2018-02-08 | 2018-02-08 |  | 11100d |  |  |
| 149 | 2.1.2.2 | characterize tilt sensor(angle range and accuracy of v3 tilt sensor) | 8d | 2018-02-08 | 2018-02-19 |  | 11900d |  | emb engr 1 |
| 150 | 2.1.2.3 | develop tilt sensor feature 1(improve angle range, accuracy,packaging,coms) | 20d | 2018-02-08 | 2018-03-13 |  | 10600d |  |  |
| 151 | 2.1.2.4 | develop tilt sensor feature 2(improve angle range, accuracy,packaging,coms) | 20d | 2018-02-08 | 2018-03-13 |  | 10600d |  |  |
| 152 | 2.1.2.5 | prepare manufacturing documents (project to phivolcs --admin heavy task ito) | 20d | 2018-02-08 | 2018-03-13 |  | 10600d |  |  |
| 153 | 2.1.2.6 | **manufacturing monitoring** | 126d | 2018-02-08 | 2018-09-03 |  |  |  |  |
| 154 | 2.1.2.6.1 | develop functionality tests | 10d | 2018-02-08 | 2018-02-22 |  |  |  |  |
| 155 | 2.1.2.6.2 | manufacture | 105d | 2018-02-23 | 2018-08-16 | 154 |  |  |  |
| 156 | 2.1.2.6.3 | troubleshoot manufacturing issues | 105d | 2018-02-23 | 2018-08-16 | 154 | 1100d |  |  |
| 157 | 2.1.2.6.4 | evaluate sample boards | 10d | 2018-08-17 | 2018-09-03 | 155 |  |  |  |
| 158 | 2.1.2.7 | develop and implement filters | 8d | 2018-02-08 | 2018-02-20 |  | 11800d |  |  |
| 159 | 2.1.2.8 | deployment of new tilt sensors | 5d | 2018-02-08 | 2018-02-14 |  | 12200d |  |  |

Notes:
- 137: trigger to alert + alert to dissemination
- 142: every product should have performance metrics included in its PI PI should include documentation per product
- 153: Fractional

| ID | WBS | Task | Duration | Start | Finish | Predecessors | Total slack | Constraint | Resources |
| --- | --- | --- | --- | --- | --- | --- | --- | --- | --- |
| 160 | 2.1.3 | **soms** | 56d | 2018-02-08 | 2018-05-15 |  | 7000d |  |  |
| 161 | 2.1.3.1 | provide initial performance metrics based on 2017 experience | 1d | 2018-02-08 | 2018-02-08 |  | 11100d |  |  |
| 162 | 2.1.3.2 | soms characterization 1 (gravimetric site-specific) | 20d | 2018-02-08 | 2018-03-13 |  | 10600d |  |  |
| 163 | 2.1.3.3 | soms characterization 2 (borehole infiltration versus non-borehole infiltration) | 10d | 2018-02-08 | 2018-02-22 |  | 11600d |  |  |
| 164 | 2.1.3.4 | soms characterization 3 (rainfall-soil moisture correlation with visual water infiltration) | 5d | 2018-02-08 | 2018-02-14 |  | 12200d |  |  |
| 165 | 2.1.3.5 | improve soms probe and its orientation | 20d | 2018-02-08 | 2018-03-13 |  | 6900d |  |  |
| 166 | 2.1.3.6 | develop new soil moisture sensor (improve accuracy, packaging, coms) prototype | 20d | 2018-03-14 | 2018-04-18 | 165 | 7000d |  |  |
| 167 | 2.1.3.7 | deploy new soms | 5d | 2018-04-19 | 2018-04-25 | 166 | 6700d |  |  |
| 168 | 2.1.3.8 | develop filter | 9d | 2018-04-26 | 2018-05-08 | 167 | 7000d |  |  |
| 169 | 2.1.3.9 | implement filter | 5d | 2018-05-09 | 2018-05-15 | 168 | 7000d |  |  |
| 170 | 2.1.4 | **uts-ext** | 126d | 2018-02-08 | 2018-09-03 |  |  |  |  |
| 171 | 2.1.4.1 | provide initial performance metrics based on 2017 experience | 1d | 2018-02-08 | 2018-02-08 |  | 11100d |  |  |
| 172 | 2.1.4.2 | char-dev-dep | 58d | 2018-05-04 | 2018-07-24 |  | 5300d | as late as possible | emb engr 3 |
| 173 | 2.1.4.3 | develop filter | 23d | 2018-07-25 | 2018-08-24 | 172 |  | as late as possible | emb engr 3 |
| 174 | 2.1.4.4 | implement filter | 6d | 2018-08-27 | 2018-09-03 | 173 |  | as late as possible | emb engr 3 |
| 175 | 2.1.5 | **lidar-ext** | 126d | 2018-02-08 | 2018-09-03 |  |  |  |  |
| 176 | 2.1.5.1 | provide initial performance metrics based on 2017 experience | 1d | 2018-02-08 | 2018-02-08 |  | 11100d |  |  |
| 177 | 2.1.5.2 | char-dev-dep | 58d | 2018-05-04 | 2018-07-24 |  | 5300d | as late as possible | emb engr 4 |
| 178 | 2.1.5.3 | develop filter | 23d | 2018-07-25 | 2018-08-24 | 177 |  | as late as possible | emb engr 4 |
| 179 | 2.1.5.4 | implement filter | 6d | 2018-08-27 | 2018-09-03 | 178 |  | as late as possible | emb engr 4 |
| 180 | 2.1.6 | **rain gauge** | 126d | 2018-02-08 | 2018-09-03 |  |  |  |  |
| 181 | 2.1.6.1 | provide initial performance metrics based on 2017 experience | 1d | 2018-02-08 | 2018-02-08 |  | 11100d |  |  |
| 182 | 2.1.6.2 | char-dev-dep | 26d | 2018-07-04 | 2018-08-08 |  | 9000d | as late as possible | emb engr 5 |
| 183 | 2.1.6.3 | develop filter | 13d | 2018-08-09 | 2018-08-27 | 182 |  | as late as possible | emb engr 5 |
| 184 | 2.1.6.4 | implement filter | 5d | 2018-08-28 | 2018-09-03 | 183 |  | as late as possible | emb engr 5 |

| ID | WBS | Task | Duration | Start | Finish | Predecessors | Total slack | Constraint | Resources |
| --- | --- | --- | --- | --- | --- | --- | --- | --- | --- |
| 185 | 2.1.7 | **piezometer** | 126d | 2018-02-08 | 2018-09-03 |  |  |  |  |
| 186 | 2.1.7.1 | provide initial performance metrics based on 2017 experience | 1d | 2018-02-08 | 2018-02-08 |  | 11100d |  |  |
| 187 | 2.1.7.2 | char-dev-dep | 20d | 2018-07-20 | 2018-08-16 |  | 9900d | as late as possible | emb engr 6 |
| 188 | 2.1.7.3 | develop filter | 6d | 2018-08-17 | 2018-08-24 | 187 |  | as late as possible | emb engr 6 |
| 189 | 2.1.7.4 | implement filter | 6d | 2018-08-27 | 2018-09-03 | 188 |  | as late as possible | emb engr 6 |
| 190 | 2.1.8 | **gateway datalogger** | 113d | 2018-02-08 | 2018-08-09 |  |  |  |  |
| 191 | 2.1.8.1 | provide initial performance metrics based on 2017 experience | 1d | 2018-02-08 | 2018-02-08 |  | 11100d |  |  |
| 192 | 2.1.8.2 | char-dev-dep | 38d | 2018-06-19 | 2018-08-09 |  | 8000d | as late as possible | emb engr 7 |
| 193 | 2.1.9 | **router datalogger** | 126d | 2018-02-08 | 2018-09-03 |  |  |  |  |
| 194 | 2.1.9.1 | provide initial performance metrics based on 2017 experience | 1d | 2018-02-08 | 2018-02-08 |  | 11100d |  |  |
| 195 | 2.1.9.2 | char-dev-dep | 18d | 2018-08-09 | 2018-09-03 |  | 11000d | as late as possible | emb engr 7 |
| 196 | 2.1.10 | **sensor datalogger** | 48d | 2018-02-08 | 2018-04-30 |  | 7800d |  |  |
| 197 | 2.1.10.1 | provide initial performance metrics based on 2017 experience | 1d | 2018-02-08 | 2018-02-08 |  | 11100d |  |  |
| 198 | 2.1.10.2 | develop sensor datalogger feature 1( rtc, low-power, xbee interface, bluetooth interface) | 10d | 2018-02-08 | 2018-02-22 |  | 11600d |  |  |
| 199 | 2.1.10.3 | develop sensor datalogger feature 2( rtc, low-power, xbee interface, bluetooth interface) | 10d | 2018-02-08 | 2018-02-22 |  | 11600d |  |  |
| 200 | 2.1.10.4 | prepare manufacturing documents | 20d | 2018-02-08 | 2018-03-13 |  | 10600d |  |  |
| 201 | 2.1.10.5 | **manufacturing monitoring** | 48d | 2018-02-08 | 2018-04-30 |  | 7800d |  |  |
| 202 | 2.1.10.5.1 | develop functionality tests | 3d | 2018-02-08 | 2018-02-12 |  | 7800d |  |  |
| 203 | 2.1.10.5.2 | manufacture | 40d | 2018-02-13 | 2018-04-23 | 202 | 7900d |  |  |
| 204 | 2.1.10.5.3 | troubleshoot manufacturing issues | 40d | 2018-02-13 | 2018-04-23 | 202 | 8300d |  |  |
| 205 | 2.1.10.5.4 | evaluate sample boards | 5d | 2018-04-24 | 2018-04-30 | 203 | 7800d |  |  |
| 206 | 2.1.11 | **stand alone datalogger** | 113d | 2018-02-08 | 2018-08-09 |  |  |  |  |
| 207 | 2.1.11.1 | provide initial performance metrics based on 2017 experience | 1d | 2018-02-08 | 2018-02-08 |  | 11100d |  |  |
| 208 | 2.1.11.2 | char-dev-dep | 20d | 2018-07-13 | 2018-08-09 |  | 9400d | as late as possible | emb engr 7 |

| ID | WBS | Task | Duration | Start | Finish | Predecessors | Total slack | Constraint | Resources |
| --- | --- | --- | --- | --- | --- | --- | --- | --- | --- |
| 209 | 2.2 | **SMS parsing system for new data structures** | 15d | 2018-08-10 | 2018-09-03 |  |  |  |  |
| 210 | 2.2.1 | develop sms parsing system | 15d | 2018-08-10 | 2018-09-03 | 192, 208 |  | as late as possible |  |
| 211 | 2.3 | **Data storage and management system** | 35d | 2018-06-15 | 2018-08-08 |  |  |  |  |
| 212 | 2.3.1 | develop new structure for storage and management | 18d | 2018-06-15 | 2018-07-10 |  | 7500d | as late as possible | sys ad 1 |
| 213 | 2.3.2 | develop automated backup | 9d | 2018-07-20 | 2018-08-01 | 212 | 700d | as late as possible | sys ad 1 |
| 214 | 2.3.3 | recommend performance metrics | 5d | 2018-08-02 | 2018-08-08 | 213 |  | as late as possible | sys ad 1 |
| 215 | 2.3.4 | develop data access for risk assessment | 7d | 2018-07-11 | 2018-07-19 | 212 |  | as late as possible | sys ad 2 |
| 216 | 2.4 | **Data analysis system** | 126d? | 2018-02-08 | 2018-09-03 |  |  |  |  |
| 217 | 2.4.1 | **threshold scripts** | 1d | 2018-08-08 | 2018-08-08 |  |  |  |  |
| 218 | 2.4.1.1 | implement thresholds | 1d | 2018-08-08 | 2018-08-08 | 57, 65, 73, 81, 89, 97 |  | as late as possible | data scientist 7 |
| 219 | 2.4.2 | **visualization scripts** | 126d? | 2018-02-08 | 2018-09-03 |  |  |  |  |
| 220 | 2.4.2.1 | research data visualization concepts (inc. hazard concepts) | 10d | 2018-07-23 | 2018-08-08 |  | 10200d | as late as possible |  |
| 221 | 2.4.2.2 | develop new web charts | 18d | 2018-08-09 | 2018-09-03 | 218, 220 |  |  | eletech |
| 222 | 2.4.2.3 | improvement of existing web charts | 1d? | 2018-09-03 | 2018-09-03 |  | 12500d | as late as possible | full stack dev 2 |
| 223 | 2.4.2.4 | improvement of webchart generation | 1d? | 2018-09-03 | 2018-09-03 |  | 12500d | as late as possible | full stack dev 2 |
| 224 | 2.4.2.5 | provide initial performance metrics based on 2017 experience | 1d | 2018-02-08 | 2018-02-08 |  | 12500d |  | eletech |
| 225 | 2.4.3 | recommend performance metrics | 1d | 2018-08-08 | 2018-08-08 |  | 11100d | as late as possible | data scientist 7 |
| 226 | 2.4.4 | draft process profile (recomm to automation integration) | 2d | 2018-08-10 | 2018-08-13 |  | 11000d | as late as possible | data scientist 7 |
| 227 | 2.5 | **Dissemination system** | 126d? | 2018-02-08 | 2018-09-03 |  |  |  |  |
| 228 | 2.5.1 | **alert generation module** | 18d | 2018-08-08 | 2018-09-03 |  |  |  |  |
| 229 | 2.5.1.1 | create modularized infrastructure for different operational triggers | 5d | 2018-08-28 | 2018-09-03 |  | 12200d | as late as possible | programmer 1 |
| 230 | 2.5.1.2 | create "special cases" tables (e.g., Puguis) | 5d | 2018-08-24 | 2018-08-30 |  | 12000d | as late as possible | programmer 1 |
| 231 | 2.5.1.3 | implement alert protocol (trigger to alert) revisions | 2d | 2018-08-31 | 2018-09-03 | 140, 230 |  | as late as possible | programmer 1 |
| 232 | 2.5.1.4 | recommend performance metrics (in relation to automation) | 1d | 2018-08-08 | 2018-08-08 |  | 11100d | as late as possible | programmer 1 |
| 233 | 2.5.1.5 | draft process profile (recomm to automation integration) | 2d | 2018-08-10 | 2018-08-13 |  | 11000d | as late as possible | programmer 1 |

Notes:
- 211: fractional activity
- 216: each system should have a performance metrics document as its PI
- 221: for 6 new web charts developed under LRI
- 222: should include speed of generation of charts
- 223: fractional

| ID | WBS | Task | Duration | Start | Finish | Predecessors | Total slack | Constraint | Resources |
| --- | --- | --- | --- | --- | --- | --- | --- | --- | --- |
| 234 | 2.5.2 | **GSM module server** | 112d? | 2018-02-08 | 2018-08-13 |  | 1400d |  |  |
| 235 | 2.5.2.1 | **develop new GSM module server features** | 12d | 2018-02-08 | 2018-02-26 |  | 11400d |  |  |
| 236 | 2.5.2.1.1 | develop power autonomy | 13d | 2018-02-08 | 2018-02-26 |  | 9800d |  | emb engr 8 |
| 237 | 2.5.2.1.2 | develop multiple gsm module hardware | 13d | 2018-02-08 | 2018-02-26 |  | 11400d |  | emb engr 8 |
| 238 | 2.5.2.2 | implement new feature requests | 1d? | 2018-02-08 | 2018-02-08 |  | 12500d |  | emb engr 8 |
| 239 | 2.5.2.3 | recommend performance metrics (in relation to automation) | 1d | 2018-08-08 | 2018-08-08 |  | 11100d | as late as possible | emb engr 8 |
| 240 | 2.5.2.4 | draft process profile (recomm to automation integration) | 2d | 2018-08-10 | 2018-08-13 |  | 11000d | as late as possible | emb engr 8 |
| 241 | 2.5.3 | **chatterbox** | 18d? | 2018-08-08 | 2018-09-03 |  |  |  |  |
| 242 | 2.5.3.1 | revise scripts for SMS generation and sending (automation?) | 6d | 2018-08-27 | 2018-09-03 |  | 12100d | as late as possible | full stack dev 3 |
| 243 | 2.5.3.2 | implement feature requests | 1d? | 2018-09-03 | 2018-09-03 |  | 12500d | as late as possible | full stack dev 3 |
| 244 | 2.5.3.3 | improve performance | 1d? | 2018-09-03 | 2018-09-03 |  | 12500d | as late as possible | full stack dev 3 |
| 245 | 2.5.3.4 | recommend performance metrics (in relation to automation) | 1d | 2018-08-08 | 2018-08-08 |  | 11100d | as late as possible | full stack dev 3 |
| 246 | 2.5.3.5 | draft process profile (recomm to automation integration) | 2d | 2018-08-10 | 2018-08-13 |  | 11000d | as late as possible | full stack dev 3 |
| 247 | 2.5.4 | **webcall** | 49d | 2018-05-25 | 2018-08-13 |  |  |  |  |
| 248 | 2.5.4.1 | acquire, implement hardware | 37d | 2018-05-25 | 2018-07-16 |  | 6400d | as late as possible | full stack dev 4 |
| 249 | 2.5.4.2 | develop/integrate software | 16d | 2018-07-17 | 2018-08-07 | 248 |  | as late as possible | full stack dev 4 |
| 250 | 2.5.4.3 | recommend performance metrics (in relation to automation) | 1d | 2018-08-08 | 2018-08-08 | 249 |  | as late as possible | full stack dev 4 |
| 251 | 2.5.4.4 | draft process profile (recomm to automation integration) | 2d | 2018-08-10 | 2018-08-13 | 250 | 100d | as late as possible | full stack dev 4 |
| 252 | 2.5.5 | **bulletin generator** | 126d? | 2018-02-08 | 2018-09-03 |  |  |  |  |
| 253 | 2.5.5.1 | revise scripts for bulletin generation and sending (automation?) | 5d | 2018-08-28 | 2018-09-03 |  | 12200d | as late as possible |  |
| 254 | 2.5.5.2 | implement feature requests | 1d? | 2018-02-08 | 2018-02-08 |  | 12500d |  |  |
| 255 | 2.5.5.3 | improve performance | 1d? | 2018-09-03 | 2018-09-03 |  | 12500d | as late as possible |  |
| 256 | 2.5.5.4 | recommend performance metrics (in relation to automation) | 1d | 2018-08-08 | 2018-08-08 |  | 11100d | as late as possible |  |
| 257 | 2.5.5.5 | draft process profile (recomm to automation integration) | 2d | 2018-08-10 | 2018-08-13 |  | 11000d | as late as possible |  |

Notes:
- 238: Agile / Fractional
- 243: Fractional (Agile)
- 244: Agile
- 248: Acquisition of hardware will take some time
- 254: Agile (Fractional)
- 255: Agile (Fractional)

| ID | WBS | Task | Duration | Start | Finish | Predecessors | Total slack | Constraint | Resources |
| --- | --- | --- | --- | --- | --- | --- | --- | --- | --- |
| 258 | 2.6 | **Local Info system (ISD)** | 74d | 2018-05-10 | 2018-09-03 |  |  |  |  |
| 259 | 2.6.1 | consolidate recommendations into ict specifications | 7d | 2018-05-10 | 2018-05-18 |  | 5300d | as late as possible | analyst 1 |
| 260 | 2.6.2 | use case testing | 38d | 2018-07-12 | 2018-09-03 | 259 | 3400d | as late as possible | analyst 1 |
| 261 | 2.6.3 | develop local codes updating system | 15d | 2018-08-14 | 2018-09-03 | 259 | 5300d | as late as possible | programmer 2 |
| 262 | 2.6.4 | port ews-l modules | 76d | 2018-05-21 | 2018-09-03 | 259 |  | as late as possible | programmer 2 |
| 263 | 2.7 | **Automation integration system** | 126d | 2018-02-08 | 2018-09-03 |  |  |  |  |
| 264 | 2.7.1 | automate recommended processes | 15d | 2018-08-14 | 2018-09-03 | 226, 233, 240, 246, 251, 257 |  | as late as possible | programmer 3 |
| 265 | 2.7.2 | recommend performance metrics | 2d | 2018-02-08 | 2018-02-09 |  | 10900d |  | programmer 3 |
| 266 | 2.8 | **Performance monitoring system of central system** | 126d? | 2018-02-08 | 2018-09-03 |  |  |  |  |
| 267 | 2.8.1 | consolidate recommendations for performance metrics | 1d? | 2018-08-09 | 2018-08-09 | 144, 148, 161, 171, 176, 181, 186, 191, 194, 197, 207, 214, 225, 232, 236, 239, 245, 250, 256, 265 |  | as late as possible | MEAL officer 1 |
| 268 | 2.8.2 | develop performance targets | 1d? | 2018-02-08 | 2018-02-08 |  | 12500d |  |  |
| 269 | 2.8.3 | **Performance monitoring system** | 15d? | 2018-08-10 | 2018-09-03 |  |  |  |  |
| 270 | 2.8.3.1 | develop PMS backbone stable version | 12d | 2018-08-10 | 2018-08-27 | 267 |  |  | programmer 4 |
| 271 | 2.8.3.2 | maintain PMS | 1d? | 2018-08-28 | 2018-08-28 | 270 | 400d |  |  |
| 272 | 2.8.3.3 | develop agile PMS components | 1d? | 2018-08-28 | 2018-08-28 | 270 | 400d |  |  |
| 273 | 2.8.3.4 | develop generic visualization charts | 5d | 2018-08-28 | 2018-09-03 | 270 |  |  |  |
| 274 | 2.8.4 | establish baseline | 1d? | 2018-02-08 | 2018-02-08 |  | 12500d |  |  |
| 275 | 2.9 | **Organized Local Early Warning Committee (LEWC)** | 46d | 2018-06-21 | 2018-09-03 |  |  |  |  |
| 276 | 2.9.1 | **LEWC org structure and mission/vision (47 sites)** | 44d | 2018-06-22 | 2018-09-03 |  |  |  |  |
| 277 | 2.9.1.1 | prepare modules | 14d | 2018-06-22 | 2018-07-11 |  | 7900d | as late as possible | comm dev 1 |
| 278 | 2.9.1.2 | conduct training/ gather data | 38d | 2018-07-12 | 2018-09-03 | 277 |  | as late as possible | facilitator 1 |
| 279 | 2.9.2 | **Guidelines for community organizing (2 sites)** | 46d | 2018-06-21 | 2018-09-03 |  |  |  |  |
| 280 | 2.9.2.1 | develop methods for community organizing | 30d | 2018-06-21 | 2018-08-01 |  | 8100d | as late as possible | comm dev 2 |
| 281 | 2.9.2.2 | gather data (fieldwork) | 12d | 2018-08-02 | 2018-08-17 | 280 |  | as late as possible | facilitator 2 |
| 282 | 2.9.2.3 | recommend activities for community organizing | 11d | 2018-08-20 | 2018-09-03 | 281 |  | as late as possible | comm dev 2 |

Notes:
- 262: Define duration and number of resources after the ICT report
- 270: PI: should be able to produce a report, either on-demand or periodically
- 271: fractional
- 272: fractional
- 276: (focus sites)

| ID | WBS | Task | Duration | Start | Finish | Predecessors | Total slack | Constraint | Resources |
| --- | --- | --- | --- | --- | --- | --- | --- | --- | --- |
| 283 | 2.9.3 | **develop guidelines for institutionalization of LEWC (2 sites)** | 46d | 2018-06-21 | 2018-09-03 |  |  |  |  |
| 284 | 2.9.3.1 | develop methods for crafing guidelines | 30d | 2018-06-21 | 2018-08-01 |  | 8100d | as late as possible | comm dev 3 |
| 285 | 2.9.3.2 | gather data (fieldwork) | 12d | 2018-08-02 | 2018-08-17 | 284 |  | as late as possible | facilitator 3 |
| 286 | 2.9.3.3 | develop guidelines for institutionalization of LEWC | 11d | 2018-08-20 | 2018-09-03 | 285 |  | as late as possible | comm dev 3 |
| 287 | 2.10 | **Guidelines for developing contingency plans for DSL (barangay level)** | 32d | 2018-07-16 | 2018-09-03 |  |  |  |  |
| 288 | 2.10.1 | review literature on contingency plans | 26d | 2018-07-16 | 2018-08-20 |  | 9500d | as late as possible | social scientist 3 |
| 289 | 2.10.2 | draft guidelines for contingency plans | 5d | 2018-08-21 | 2018-08-27 | 288 |  | as late as possible | social scientist 3 |
| 290 | 2.10.3 | approve guidelines for contingency plans | 5d | 2018-08-28 | 2018-09-03 | 289 |  | as late as possible | social scientist 3 |
| 291 | 2.11 | **Operations manual** | 10d | 2018-08-20 | 2018-09-03 |  |  |  |  |
| 292 | 2.11.1 | update EWS operations manual (1) | 4d | 2018-08-20 | 2018-08-23 | 140 |  | as late as possible | DRRS 2 |
| 293 | 2.11.2 | update EWS operations manual (2) | 4d | 2018-08-24 | 2018-08-29 | 140, 292 |  |  | DRRS 2 |
| 294 | 2.11.3 | update EWS operations manual (3) | 3d | 2018-08-30 | 2018-09-03 | 140, 293 |  |  | DRRS 2 |
| 295 | 3 | **Early warning information** | 126d? | 2018-02-08 | 2018-09-03 |  |  |  |  |
| 296 | 3.1 | generate, review, and release EWI | 1d? | 2018-09-03 | 2018-09-03 |  | 12500d | as late as possible | monitoringPersonnel40+ |
| 297 | 3.2 | **EWI support** | 126d? | 2018-02-08 | 2018-09-03 |  |  |  |  |
| 298 | 3.2.1 | **operational systems** | 1d? | 2018-09-03 | 2018-09-03 |  |  |  |  |
| 299 | 3.2.1.1 | **sensors and dataloggers** | 1d? | 2018-09-03 | 2018-09-03 |  |  |  |  |
| 300 | 3.2.1.1.1 | replace defective sensors and loggers | 1d? | 2018-09-03 | 2018-09-03 |  | 12500d | as late as possible | eletech 1 |
| 301 | 3.2.1.1.2 | monitor sensor and datalogger health status | 1d? | 2018-09-03 | 2018-09-03 |  | 12500d | as late as possible | emb engr 8 |
| 302 | 3.2.1.1.3 | track maintenance activities | 1d? | 2018-09-03 | 2018-09-03 |  | 12500d | as late as possible | emb engr 8 |
| 303 | 3.2.1.1.4 | manage inventory | 1d? | 2018-09-03 | 2018-09-03 |  | 12500d | as late as possible | eletech 2 |
| 304 | 3.2.1.1.5 | track PLAA events | 1d? | 2018-09-03 | 2018-09-03 |  | 12500d | as late as possible | emb engr 8 |
| 305 | 3.2.1.1.6 | track sensor events | 1d? | 2018-09-03 | 2018-09-03 |  | 12500d | as late as possible | emb engr 8 |
| 306 | 3.2.1.1.7 | field-based maintenance | 1d? | 2018-09-03 | 2018-09-03 |  | 12500d | as late as possible | eletech 3 |

Notes:
- 287: ilan bang sites?
- 291: may dependency sa MEAL results (habang hindi pa fully defined ang MEAL) consider an "about the project" document as dependency
- 296: fractional work, will vary per staff
- 298: fractional work for all activities under this
- 300: includes drilling and deployment; (may be include also procurement of drilling services?)

| ID | WBS | Task | Duration | Start | Finish | Predecessors | Total slack | Constraint | Resources |
| --- | --- | --- | --- | --- | --- | --- | --- | --- | --- |
| 307 | 3.2.1.2 | **central server (software)** | 1d? | 2018-09-03 | 2018-09-03 |  |  |  |  |
| 308 | 3.2.1.2.1 | maintain data gathering system | 1d? | 2018-09-03 | 2018-09-03 |  | 12500d | as late as possible |  |
| 309 | 3.2.1.2.2 | maintain data storage and management system | 1d? | 2018-09-03 | 2018-09-03 |  | 12500d | as late as possible |  |
| 310 | 3.2.1.2.3 | maintain data analysis system | 1d? | 2018-09-03 | 2018-09-03 |  | 12500d | as late as possible |  |
| 311 | 3.2.1.2.4 | maintain info dissemination system | 1d? | 2018-09-03 | 2018-09-03 |  | 12500d | as late as possible |  |
| 312 | 3.2.1.2.5 | train staff for debugging | 0.5d? | 2018-09-03 | 2018-09-03 |  | 12550d | as late as possible |  |
| 313 | 3.2.1.2.6 | produce code and documentation standards | 1d? | 2018-09-03 | 2018-09-03 |  | 12500d | as late as possible |  |
| 314 | 3.2.2 | **updated database** | 1d? | 2018-09-03 | 2018-09-03 |  |  |  |  |
| 315 | 3.2.2.1 | maintain tables | 1d? | 2018-09-03 | 2018-09-03 |  | 12500d | as late as possible |  |
| 316 | 3.2.3 | **parsed SMS** | 1d? | 2018-09-03 | 2018-09-03 |  |  |  |  |
| 317 | 3.2.3.1 | maintain SMS parsing | 1d? | 2018-09-03 | 2018-09-03 |  | 12500d | as late as possible |  |
| 318 | 3.2.4 | **capable personnel for monitoring and early warning** | 126d? | 2018-02-08 | 2018-09-03 |  |  |  |  |
| 319 | 3.2.4.1 | **develop training materials** | 17d? | 2018-08-06 | 2018-08-31 |  |  |  |  |
| 320 | 3.2.4.1.1 | hazard monitoring | 20d | 2018-08-06 | 2018-08-31 |  | 10900d | as late as possible | training specialist 1 |
| 321 | 3.2.4.1.2 | analysis and validation | 20d | 2018-08-06 | 2018-08-31 |  | 10900d | as late as possible | training specialist 1 |
| 322 | 3.2.4.1.3 | sensor maintenance | 1d? | 2018-08-31 | 2018-08-31 |  | 12400d | as late as possible | eletech 5 |
| 323 | 3.2.4.1.4 | communications protocol | 20d | 2018-08-06 | 2018-08-31 |  | 10900d | as late as possible | training specialist 1 |
| 324 | 3.2.4.2 | **conduct EWS protocol trainings (internal)** | 1d? | 2018-09-03 | 2018-09-03 |  |  |  |  |
| 325 | 3.2.4.2.1 | hazard monitoring | 1d | 2018-09-03 | 2018-09-03 | 320 |  | as late as possible | geotech 1 |
| 326 | 3.2.4.2.2 | analysis and validation | 1d | 2018-09-03 | 2018-09-03 | 321 |  | as late as possible | data scientist 7 |
| 327 | 3.2.4.2.3 | sensor maintenance | 1d? | 2018-09-03 | 2018-09-03 | 322 |  | as late as possible | eletech 5 |
| 328 | 3.2.4.2.4 | communications protocol | 1d | 2018-09-03 | 2018-09-03 | 323 |  | as late as possible | DRRS 2 |
| 329 | 3.2.4.3 | **conduct EWS protocol trainings (external)** | 126d? | 2018-02-08 | 2018-09-03 |  |  |  |  |
| 330 | 3.2.4.3.1 | combo training 1 (hazard monitoring, analysis, comm protocol) | 8d | 2018-02-08 | 2018-02-20 |  | 11800d |  | training specialist 1; training specialist 2; training specialist 4 |
| 331 | 3.2.4.3.2 | combo training 2 (hazard monitoring, analysis, comm protocol) | 8d | 2018-02-08 | 2018-02-20 |  | 11800d |  | training specialist 1; training specialist 2; training specialist 4 |
| 332 | 3.2.4.3.3 | combo training 3 (hazard monitoring, analysis, comm protocol) | 8d | 2018-02-08 | 2018-02-20 |  | 11800d |  | training specialist 1; training specialist 2; training specialist 4 |
| 333 | 3.2.4.3.4 | combo training n (hazard monitoring, analysis, comm protocol) | 8d | 2018-02-08 | 2018-02-20 |  | 11800d |  | training specialist 1; training specialist 2; training specialist 4 |
| 334 | 3.2.4.3.5 | sensor maintenance | 1d? | 2018-09-03 | 2018-09-03 |  | 12500d | as late as possible | training specialist 3 |

Notes:
- 312: for purpose of pool of debuggers
- 314: fractional work
- 316: Fractional work
- 322: fractional work
- 324: will involve some, if not all of project staff, as participants in training; proposal: express this as fractional work included in monitoring
- 327: fractional work
- 330: assume duration accounts for cluster of 2-3 sites
- 331: assume duration accounts for cluster of 2-3 sites
- 332: assume duration accounts for cluster of 2-3 sites
- 333: assume duration accounts for cluster of 2-3 sites
- 334: fractional work

| ID | WBS | Task | Duration | Start | Finish | Predecessors | Total slack | Constraint | Resources |
| --- | --- | --- | --- | --- | --- | --- | --- | --- | --- |
| 335 | 4 | **Strategic communications** | 15d? | 2018-08-10 | 2018-09-03 |  |  |  |  |
| 336 | 4.1 | research stakeholder info needs | 1d? | 2018-08-10 | 2018-08-10 |  | 11000d | as late as possible | comm res 1 |
| 337 | 4.2 | research policy process | 1d? | 2018-09-03 | 2018-09-03 |  | 12500d | as late as possible | comm res 2 |
| 338 | 4.3 | develop strategic comm plan | 1d? | 2018-08-13 | 2018-08-13 | 336 |  | as late as possible | comm res 1 |
| 339 | 4.4 | **develop communication materials** | 14d? | 2018-08-14 | 2018-09-03 | 338 |  |  |  |
| 340 | 4.4.1 | **website** | 14d? | 2018-08-14 | 2018-09-03 |  |  |  |  |
| 341 | 4.4.1.1 | develop website content | 1d? | 2018-08-14 | 2018-08-14 |  |  | as late as possible | comm res 1 |
| 342 | 4.4.1.2 | design website | 1d? | 2018-08-15 | 2018-08-15 | 341 |  | as late as possible | comm res 1 |
| 343 | 4.4.1.3 | develop content management system (core) | 13d | 2018-08-16 | 2018-09-03 | 342 |  | as late as possible | full stack dev 1 |
| 344 | 4.5 | develop non-website communications | 1d? | 2018-09-03 | 2018-09-03 |  | 12500d | as late as possible | comm res 2 |
| 345 | 5 | **MEAL system** | 126d? | 2018-02-08 | 2018-09-03 |  |  |  |  |
| 346 | 5.1 | sourcing of MEAL expert | 8d | 2018-02-08 | 2018-02-19 |  | 2800d |  | MEAL officer 1 |
| 347 | 5.2 | develop MEAL framework | 2d | 2018-04-10 | 2018-04-11 | 346 | 2700d | as late as possible | MEAL expert; MEAL officer 1; MEAL officer 2; MEAL officer 3; MEAL officer 4; MEAL officer 5; MEAL officer 6 |
| 348 | 5.3 | develop MEAL plan | 4d | 2018-04-12 | 2018-04-17 | 347 |  | as late as possible | MEAL expert; MEAL officer 1; MEAL officer 2; MEAL officer 3; MEAL officer 4; MEAL officer 5; MEAL officer 6 |
| 349 | 5.4 | conduct training needs analysis | 1d | 2018-04-18 | 2018-04-18 | 348 | 8400d |  |  |
| 350 | 5.5 | develop training plan | 2d | 2018-04-19 | 2018-04-20 | 349 | 8300d |  |  |
| 351 | 5.6 | **monitoring mechanisms** | 126d | 2018-02-08 | 2018-09-03 |  |  |  |  |
| 352 | 5.6.1 | **standard documentation and storage** | 5d | 2018-08-24 | 2018-09-03 |  |  |  |  |
| 353 | 5.6.1.1 | design documentation templates and organization/structure | 5d | 2018-08-24 | 2018-08-30 | 348 | 8000d | as late as possible | MEAL officer 1; MEAL officer 2; MEAL officer 3; MEAL officer 4; MEAL officer 5; MEAL officer 6 |
| 354 | 5.6.1.2 | design repository system | 2d | 2018-08-31 | 2018-09-03 | 353 |  | as late as possible | programmer 1 |
| 355 | 5.6.2 | **PLAA** | 3d | 2018-08-30 | 2018-09-03 |  |  |  |  |
| 356 | 5.6.2.1 | review current PLAA vis-a-vis MEAL plan | 2d | 2018-08-30 | 2018-08-31 | 348 | 8400d | as late as possible | MEAL officer 1; MEAL staff 1; MEAL staff 2 |
| 357 | 5.6.2.2 | revise PLAA guidelines | 1d | 2018-09-03 | 2018-09-03 | 356 |  | as late as possible | MEAL officer 1; MEAL staff 1; MEAL staff 2 |
| 358 | 5.6.3 | **EWS-QA** | 126d | 2018-02-08 | 2018-09-03 |  |  |  |  |
| 359 | 5.6.3.1 | review current EWS-QA vis-a-vis MEAL plan | 2d | 2018-08-30 | 2018-08-31 | 348 | 8400d | as late as possible | MEAL officer 2; MEAL staff 3; MEAL staff 4 |
| 360 | 5.6.3.2 | revise EWS-QA guidelines | 1d | 2018-09-03 | 2018-09-03 | 359 |  | as late as possible | MEAL officer 2; MEAL staff 3; MEAL staff 4 |
| 361 | 5.6.3.3 | revise tools for data gathering | 2d | 2018-02-08 | 2018-02-09 |  | 12300d |  | programmer 2 |

Notes:
- 354: google drive (free account) as main repo; task involves mainly the set-up of the account, permissions, etc...

| ID | WBS | Task | Duration | Start | Finish | Predecessors | Total slack | Constraint | Resources |
| --- | --- | --- | --- | --- | --- | --- | --- | --- | --- |
| 362 | 5.6.4 | **outcome-impact** | 3d | 2018-08-30 | 2018-09-03 |  |  |  |  |
| 363 | 5.6.4.1 | review outcome-impact vis-a-vis MEAL plan | 2d | 2018-08-30 | 2018-08-31 | 348 | 8400d | as late as possible | MEAL officer 3; MEAL staff 5; MEAL staff 6 |
| 364 | 5.6.4.2 | revise outcome-impact | 1d | 2018-09-03 | 2018-09-03 | 363 |  | as late as possible | MEAL officer 3; MEAL staff 5; MEAL staff 6 |
| 365 | 5.6.5 | **administrative process** | 3d | 2018-08-30 | 2018-09-03 |  |  |  |  |
| 366 | 5.6.5.1 | review admin process trackers vis-a-vis MEAL plan | 2d | 2018-08-30 | 2018-08-31 | 348 | 8400d | as late as possible | MEAL officer 4; MEAL staff 7; MEAL staff 8 |
| 367 | 5.6.5.2 | revise admin process trackers | 1d | 2018-09-03 | 2018-09-03 | 366 |  | as late as possible | MEAL officer 4; MEAL staff 7; MEAL staff 8 |
| 368 | 5.6.6 | **project output** | 3d | 2018-08-30 | 2018-09-03 |  |  |  |  |
| 369 | 5.6.6.1 | develop team output tracker | 1d | 2018-08-30 | 2018-08-30 | 348 | 8400d | as late as possible | MEAL officer 5; MEAL staff 10; MEAL staff 9 |
| 370 | 5.6.6.2 | develop individual output tracker | 1d | 2018-08-31 | 2018-08-31 | 348, 369 |  | as late as possible | MEAL officer 5; MEAL staff 10; MEAL staff 9 |
| 371 | 5.6.6.3 | develop individual capacity tracker | 1d | 2018-09-03 | 2018-09-03 | 348, 370 |  | as late as possible | MEAL officer 5; MEAL staff 10; MEAL staff 9 |
| 372 | 5.6.7 | **stakeholder concerns** | 0.5d | 2018-09-03 | 2018-09-03 |  |  |  |  |
| 373 | 5.6.7.1 | develop stakeholder concerns tracker | 0.5d | 2018-09-03 | 2018-09-03 | 348 | 8650d | as late as possible | MEAL officer 3; MEAL staff 5; MEAL staff 6 |
| 374 | 5.7 | **MEAL implem** | 87d? | 2018-04-18 | 2018-09-03 |  |  |  |  |
| 375 | 5.7.1 | **EWS-QA** | 1d | 2018-04-18 | 2018-04-18 | 348 | 8600d |  |  |
| 376 | 5.7.1.1 | **bimonthly** | 1d | 2018-04-18 | 2018-04-18 |  | 8600d |  |  |
| 377 | 5.7.1.1.1 | gather, analyze, evaluate data | 1d | 2018-04-18 | 2018-04-18 |  | 8600d |  | MEAL officer 2; MEAL staff 3; MEAL staff 4 |
| 378 | 5.7.1.1.2 | prepare for presentation (feedback sessions) | 0d | 2018-04-18 | 2018-04-18 | 377 | 8600d |  | MEAL officer 2; MEAL staff 3; MEAL staff 4 |
| 379 | 5.7.1.2 | **quarterly** | 1d | 2018-04-18 | 2018-04-18 |  | 8600d |  |  |
| 380 | 5.7.1.2.1 | gather, analyze, evaluate data | 1d | 2018-04-18 | 2018-04-18 |  | 8600d |  | MEAL officer 2; MEAL staff 3; MEAL staff 4 |
| 381 | 5.7.1.2.2 | prepare for presentation (feedback sessions) | 0d | 2018-04-18 | 2018-04-18 | 380 | 8600d |  | MEAL officer 2; MEAL staff 3; MEAL staff 4 |
| 382 | 5.7.1.3 | **annual** | 1d | 2018-04-18 | 2018-04-18 |  | 8600d |  |  |
| 383 | 5.7.1.3.1 | gather, analyze, evaluate data | 1d | 2018-04-18 | 2018-04-18 |  | 8600d |  | MEAL officer 2; MEAL staff 3; MEAL staff 4 |
| 384 | 5.7.1.3.2 | prepare for presentation (feedback sessions) | 0d | 2018-04-18 | 2018-04-18 | 383 | 8600d |  | MEAL officer 2; MEAL staff 3; MEAL staff 4 |
| 385 | 5.7.2 | **PLAA** | 87d? | 2018-04-18 | 2018-09-03 | 348 |  |  |  |
| 386 | 5.7.2.1 | **site 1** | 14d | 2018-04-18 | 2018-05-10 |  |  |  |  |
| 387 | 5.7.2.1.1 | conduct sensor fieldwork - write report | 7d | 2018-04-18 | 2018-04-26 |  | 700d |  | eletech 1; eletech 2 |
| 388 | 5.7.2.1.2 | conduct landslide fieldwork - write report | 14d | 2018-04-18 | 2018-05-07 |  |  |  | geol 1; geotech 1 |
| 389 | 5.7.2.1.3 | conduct community fieldwork - write report | 14d | 2018-04-18 | 2018-05-07 |  |  |  | social scientist 1; social scientist 2 |
| 390 | 5.7.2.1.4 | review | 3d | 2018-05-08 | 2018-05-10 | 387, 388, 389 |  |  | MEAL officer 1; MEAL staff 1; MEAL staff 2 |

Notes:
- 376: QA feedback session should be incorporated in main monitoring work, also as fractional work
- 385: mas ipwesto ang karamihan ng PLAA sa 2nd half
- 390: kelangan ilinaw ang scope ng review

| ID | WBS | Task | Duration | Start | Finish | Predecessors | Total slack | Resources |
| --- | --- | --- | --- | --- | --- | --- | --- | --- |
| 391 | 5.7.2.2 | **site 2** | 15d | 2018-05-11 | 2018-05-31 | 386 |  |  |
| 392 | 5.7.2.2.1 | conduct sensor fieldwork - write report | 5d | 2018-05-11 | 2018-05-17 |  | 700d | eletech 1; eletech 2 |
| 393 | 5.7.2.2.2 | conduct landslide fieldwork - write report | 12d | 2018-05-11 | 2018-05-28 |  |  | geol 1; geotech 1 |
| 394 | 5.7.2.2.3 | conduct community fieldwork - write report | 12d | 2018-05-11 | 2018-05-28 |  |  | social scientist 1; social scientist 2 |
| 395 | 5.7.2.2.4 | review | 3d | 2018-05-29 | 2018-05-31 | 392, 393, 394 |  | MEAL officer 1; MEAL staff 1; MEAL staff 2 |
| 396 | 5.7.2.3 | **site 3** | 14d | 2018-06-01 | 2018-06-22 | 391 |  |  |
| 397 | 5.7.2.3.1 | conduct sensor fieldwork - write report | 5d | 2018-06-01 | 2018-06-11 |  | 600d | eletech 1; eletech 2 |
| 398 | 5.7.2.3.2 | conduct landslide fieldwork - write report | 11d | 2018-06-01 | 2018-06-19 |  |  | geol 1; geotech 1 |
| 399 | 5.7.2.3.3 | conduct community fieldwork - write report | 11d | 2018-06-01 | 2018-06-19 |  |  | social scientist 1; social scientist 2 |
| 400 | 5.7.2.3.4 | review | 3d | 2018-06-20 | 2018-06-22 | 397, 398, 399 |  | MEAL officer 1; MEAL staff 1; MEAL staff 2 |
| 401 | 5.7.2.4 | **site 4** | 12d | 2018-06-25 | 2018-07-13 | 396 |  |  |
| 402 | 5.7.2.4.1 | conduct sensor fieldwork - write report | 6d | 2018-06-25 | 2018-07-04 |  | 400d | eletech 1; eletech 2 |
| 403 | 5.7.2.4.2 | conduct landslide fieldwork - write report | 9d | 2018-06-25 | 2018-07-10 |  |  | geol 1; geotech 1 |
| 404 | 5.7.2.4.3 | conduct community fieldwork - write report | 9d | 2018-06-25 | 2018-07-10 |  |  | social scientist 1; social scientist 2 |
| 405 | 5.7.2.4.4 | review | 3d | 2018-07-11 | 2018-07-13 | 402, 403, 404 |  | MEAL officer 1; MEAL staff 1; MEAL staff 2 |
| 406 | 5.7.2.5 | **site 5** | 16d | 2018-07-16 | 2018-08-08 | 401 |  |  |
| 407 | 5.7.2.5.1 | conduct sensor fieldwork - write report | 8d | 2018-07-16 | 2018-07-25 |  | 700d | eletech 1; eletech 2 |
| 408 | 5.7.2.5.2 | conduct landslide fieldwork - write report | 15d | 2018-07-16 | 2018-08-03 |  |  | geol 1; geotech 1 |
| 409 | 5.7.2.5.3 | conduct community fieldwork - write report | 15d | 2018-07-16 | 2018-08-03 |  |  | social scientist 1; social scientist 2 |
| 410 | 5.7.2.5.4 | review | 3d | 2018-08-06 | 2018-08-08 | 408, 407, 409 |  | MEAL officer 1; MEAL staff 1; MEAL staff 2 |
| 411 | 5.7.2.6 | **site 6** | 17d | 2018-08-09 | 2018-09-03 | 406 |  |  |
| 412 | 5.7.2.6.1 | conduct sensor fieldwork - write report | 8d | 2018-08-09 | 2018-08-20 |  | 600d | eletech 1; eletech 2 |
| 413 | 5.7.2.6.2 | conduct landslide fieldwork - write report | 15d | 2018-08-09 | 2018-08-29 |  |  | geol 1; geotech 1 |
| 414 | 5.7.2.6.3 | conduct community fieldwork - write report | 15d | 2018-08-09 | 2018-08-29 |  |  | social scientist 1; social scientist 2 |
| 415 | 5.7.2.6.4 | review | 3d | 2018-08-30 | 2018-09-03 | 413, 412, 414 |  | MEAL officer 1; MEAL staff 1; MEAL staff 2 |
| 416 | 5.7.2.7 | synthesis (across sites) | 1d? | 2018-04-18 | 2018-04-18 |  | 8600d |  |

Notes:
- 395: kelangan ilinaw ang scope ng review
- 400: kelangan ilinaw ang scope ng review
- 405: kelangan ilinaw ang scope ng review
- 410: kelangan ilinaw ang scope ng review
- 415: kelangan ilinaw ang scope ng review

| ID | WBS | Task | Duration | Start | Finish | Predecessors | Total slack |
| --- | --- | --- | --- | --- | --- | --- | --- |
| 417 | 5.7.3 | **outcome-impact** | 1d? | 2018-04-18 | 2018-04-18 | 348 | 8600d |
| 418 | 5.7.3.1 | **activity series 1** | 1d? | 2018-04-18 | 2018-04-18 |  | 8600d |
| 419 | 5.7.3.1.1 | gather data | 1d? | 2018-04-18 | 2018-04-18 |  | 8600d |
| 420 | 5.7.3.1.2 | analyze, evaluate data | 1d? | 2018-04-18 | 2018-04-18 |  | 8600d |
| 421 | 5.7.3.1.3 | provide recommendations | 1d? | 2018-04-18 | 2018-04-18 |  | 8600d |
| 422 | 5.7.4 | **project output** | 1d? | 2018-04-18 | 2018-04-18 | 348 | 8600d |
| 423 | 5.7.4.1 | **activity series 1** | 1d? | 2018-04-18 | 2018-04-18 |  | 8600d |
| 424 | 5.7.4.1.1 | gather data | 1d? | 2018-04-18 | 2018-04-18 |  | 8600d |
| 425 | 5.7.4.1.2 | analyze, evaluate data | 1d? | 2018-04-18 | 2018-04-18 |  | 8600d |
| 426 | 5.7.4.1.3 | provide recommendations | 1d? | 2018-04-18 | 2018-04-18 |  | 8600d |
| 427 | 5.7.5 | **stakeholder concerns** | 1d? | 2018-04-18 | 2018-04-18 | 348 | 8600d |
| 428 | 5.7.5.1 | **activity series 1** | 1d? | 2018-04-18 | 2018-04-18 |  | 8600d |
| 429 | 5.7.5.1.1 | gather data | 1d? | 2018-04-18 | 2018-04-18 |  | 8600d |
| 430 | 5.7.5.1.2 | analyze, evaluate data | 1d? | 2018-04-18 | 2018-04-18 |  | 8600d |
| 431 | 5.7.5.1.3 | provide recommendations | 1d? | 2018-04-18 | 2018-04-18 |  | 8600d |
| 432 | 5.7.6 | **admin process** | 1d? | 2018-04-18 | 2018-04-18 | 348 | 8600d |
| 433 | 5.7.6.1 | **activity series 1** | 1d? | 2018-04-18 | 2018-04-18 |  | 8600d |
| 434 | 5.7.6.1.1 | gather data | 1d? | 2018-04-18 | 2018-04-18 |  | 8600d |
| 435 | 5.7.6.1.2 | analyze, evaluate data | 1d? | 2018-04-18 | 2018-04-18 |  | 8600d |
| 436 | 5.7.6.1.3 | provide recommendations | 1d? | 2018-04-18 | 2018-04-18 |  | 8600d |
